# Коттедж4

Schedule from MS Project, 2011-09-01 to 2012-02-27.

## Calendars

- Стандартный: Mon-Fri 09:00-13:00, 14:00-18:00; Sat-Sun off. Exceptions (off unless hours are given): 2012-01-28 09:00-13:00, 14:00-18:00.
- Календарь рабочих: Mon-Sat 07:00-11:00, 11:30-18:30, 19:00-22:00; Sun off. Exceptions (off unless hours are given): 2011-12-30 to 2012-01-08 (Новый год 2011-2012).
- Календарь ИТР: Mon-Fri 09:00-13:00, 14:00-18:00; Sat-Sun off. Exceptions (off unless hours are given): 2011-12-30 to 2012-01-08 (Новый год 2011-2012).

## Resources

| Resource | Rate | Cost per use |
| --- | --- | --- |
| Генеральный директор проекта | 100 |  |
| Менеджер проекта | 75 |  |
| Маркетолог | 65 |  |
| Ведущий экономист | 65 |  |
| Эксперт по юридическим вопросам | 70 |  |
| Архитектор | 70 |  |
| Ведущий проектировщик | 65 |  |
| Главный проектировщик | 60 |  |
| Ответственный за землеотвод | 65 |  |
| Менеджер по реализации | 50 |  |
| Прораб | 60 |  |
| Маляр-штукатур 1 смена | 40 |  |
| Маляр-штукатур 2 смена | 40 |  |
| Плотник 1 смена | 40 |  |
| Плотник 2 смена | 40 |  |
| Монтажник 1 смена | 45 |  |
| Монтажник 2 смена | 45 |  |
| Разнорабочий 1 смена | 20 |  |
| Разнорабочий 2 смена | 20 |  |
| Сварщик 1 смена | 40 |  |
| Сварщик 2 смена | 40 |  |
| Такелажник 1 смена | 45 |  |
| Такелажник 2 смена | 45 |  |
| Бетонанасос | 120 | 200 |
| Сварочный аппарат | 90 | 400 |
| Автокран | 250 | 300 |

## Schedule

| ID | WBS | Task | Type | Duration | Start | Finish | Predecessors | Total slack | Constraint | Deadline | Calendar | Work |
| --- | --- | --- | --- | --- | --- | --- | --- | --- | --- | --- | --- | --- |
| 1 | КТДж.ИНИ | **Инициализация проекта** |  | 16d | 2011-09-01 | 2011-09-22 |  | 0d |  |  |  | 70h |
| 2 | КТДж.ИНИ.ААА | Принято решение о начале этапа Инициализация | milestone | 0d | 2011-09-01 | 2011-09-01 |  | 0d |  |  | Календарь ИТР |  |
| 3 | КТДж.ИНИ.ААБ | Юридический анализ ЗУ |  | 10d | 2011-09-01 | 2011-09-14 | 2SS | 0d |  |  | Календарь ИТР | 30h |
| 4 | КТДж.ИНИ.ААВ | Маркетинговый анализ ЗУ |  | 6d | 2011-09-01 | 2011-09-08 | 3SS | 4d |  |  | Календарь ИТР | 20h |
| 5 | КТДж.ИНИ.ААГ | Составление бизнес-плана |  | 4d | 2011-09-15 | 2011-09-20 | 4, 3 | 0d |  |  | Календарь ИТР | 16h |
| 6 | КТДж.ИНИ.ААД | Принятие решения по проекту |  | 2d | 2011-09-21 | 2011-09-22 | 5 | 0d |  |  | Календарь ИТР | 4h |
| 7 | КТДж.ИНИ.ААЕ | Решение о начале проекта | milestone | 0d | 2011-09-22 | 2011-09-22 | 6 | 0d |  | 2011-09-28 | Календарь ИТР |  |
| 8 | КТДж.ЗЕМ | **Землеотвод** |  | 30d | 2011-09-23 | 2011-11-03 |  | 0d |  |  |  | 86h |
| 9 | КТДж.ЗЕМ.ААА | Разработка документации по землеотводу |  | 15d | 2011-09-23 | 2011-10-13 | 7 | 0d | start no earlier than 2011-09-23 |  | Календарь ИТР | 30h |
| 10 | КТДж.ЗЕМ.ААБ | Согласование проекта отвода земли |  | 10d | 2011-10-14 | 2011-10-27 | 9 | 0d | start no earlier than 2011-10-14 |  | Календарь ИТР | 24h |
| 11 | КТДж.ЗЕМ.ААВ | Заключение договора аренды |  | 5d | 2011-10-28 | 2011-11-03 | 10 | 0d |  |  | Календарь ИТР | 32h |
| 12 | КТДж.ЗЕМ.ААГ | Окончание этапа Землеотвода | milestone | 0d | 2011-11-03 | 2011-11-03 | 11 | 0d |  | 2011-11-09 | Календарь ИТР |  |
| 13 | КТДж.ПРО | **Проектирование** |  | 58d | 2011-11-04 | 2012-01-24 |  | 0d |  |  |  | 416h |
| 14 | КТДж.ПРО.AAD | **Подэтапный Экскиз проект** |  | 5d | 2011-11-04 | 2011-11-10 |  | 0d |  |  |  | 40h |
| 15 | КТДж.ПРО.AAD.AAA | Разработка экскизного проекта |  | 5d | 2011-11-04 | 2011-11-10 | 12 | 0d |  |  | Календарь ИТР | 40h |
| 16 | КТДж.ПРО.AAF | **Подэтап Проект стадии П** |  | 25d | 2011-11-11 | 2011-12-15 |  | 0d |  |  |  | 200h |
| 17 | КТДж.ПРО.AAF.AAA | Разработка проекта стадии П |  | 25d | 2011-11-11 | 2011-12-15 | 15 | 0d |  |  | Календарь ИТР | 200h |
| 18 | КТДж.ПРО.AAB | **Подэтап Рабочая документация** |  | 28d | 2011-12-16 | 2012-01-24 |  | 0d |  |  |  | 176h |
| 19 | КТДж.ПРО.AAB.AAA | Проработка рабочих чертежей |  | 20d | 2011-12-16 | 2012-01-20 | 17 | 0d |  |  | Календарь ИТР | 160h |
| 20 | КТДж.ПРО.AAB.AAB | Передача рабочих чертежей Генподрядчику |  | 2d | 2012-01-23 | 2012-01-24 | 19 | 0d |  |  | Календарь ИТР | 16h |
| 21 | КТДж.ПРО.AAB.AAC | Крайний срок выдачи РД | milestone | 0d | 2012-01-24 | 2012-01-24 | 20 | 0d |  | 2012-01-25 | Календарь ИТР |  |
| 22 | КТДж.СМР | **Строительство** |  | 17.06d | 2012-01-24 | 2012-02-16 |  | 0d |  |  |  | 368h |
| 23 | КТДж.СМР.AAC | **Подэтап Надземные работы** |  | 9d | 2012-01-24 | 2012-02-03 |  | 0d |  |  |  |  |
| 24 | КТДж.СМР.AAC.AAG | Кирпичная кладка наружных стен |  | 7d | 2012-01-24 | 2012-01-28 | 21 | 0d |  |  | Календарь рабочих |  |
| 25 | КТДж.СМР.AAC.AAH | Кирпичная кладка внутренних стен |  | 5d | 2012-01-28 | 2012-02-01 | 24 | 0d |  |  | Календарь рабочих |  |
| 26 | КТДж.СМР.AAC.AAI | Устройство кровли |  | 6d | 2012-01-31 | 2012-02-03 | 25SS+6% | 0d |  |  | Календарь рабочих |  |

| ID | WBS | Task | Type | Duration | Start | Finish | Predecessors | Total slack | Deadline | Calendar | Work |
| --- | --- | --- | --- | --- | --- | --- | --- | --- | --- | --- | --- |
| 27 | КТДж.СМР.AAG | **Подэтап Отделочные работы** |  | 8.06d | 2012-02-03 | 2012-02-16 |  | 0d |  |  | 368h |
| 28 | КТДж.СМР.AAG.AAE | Монтаж окон |  | 4d | 2012-02-03 | 2012-02-07 | 26 | 0d |  | Календарь рабочих | 64h |
| 29 | КТДж.СМР.AAG.AAD | Монтаж дверей |  | 4d | 2012-02-07 | 2012-02-09 | 28 | 0d |  | Календарь рабочих | 64h |
| 30 | КТДж.СМР.AAG.AAC | Штукатурные работы |  | 10d | 2012-02-09 | 2012-02-16 | 29 | 0d |  | Календарь рабочих | 240h |
| 31 | КТДж.СМР.AAG.AAB | Крайний срок окончания строительства | milestone | 0d | 2012-02-16 | 2012-02-16 | 30 | 0d | 2012-02-24 | Календарь рабочих |  |
| 32 | КТДж.РЕК | **Реализация коттеджа** |  | 7d? | 2012-02-16 | 2012-02-27 |  | 0d |  |  | 28h |
| 33 | КТДж.РЕК.AAD | Согласование договора с клиентом |  | 4d | 2012-02-16 | 2012-02-22 | 31, 23 | 0d |  | Календарь ИТР | 16h |
| 34 | КТДж.РЕК.AAC | Подписание договора с клиентом |  | 2d | 2012-02-22 | 2012-02-24 | 33 | 0d |  | Календарь ИТР | 8h |
| 35 | КТДж.РЕК.AAB | Оплата по договору |  | 1d? | 2012-02-24 | 2012-02-27 | 34 | 0d |  | Календарь ИТР | 4h |
| 36 | КТДж.РЕК.AAA | Крайний срок окончания реализации | milestone | 0d | 2012-02-27 | 2012-02-27 | 35 | 0d |  | Календарь ИТР |  |
